Schedule from MS Project, 2006-10-27 to 2030-11-26, status date 2017-11-27, A marks actual dates.

## Calendars

- 标准: Mon-Fri 08:00-12:00, 13:00-17:00; Sat-Sun off.

## Resources

| Resource |
| --- |
| 张飞 |
| 袁曾志 |
| 付金雷 |
| 勇占奎 |
| 彭宗阁 |
| 洪壮 |
| 计培 |
| 小孙 |
| 卢海影 |
| 李计培 |

## Schedule

| ID | WBS | Task | Type | Duration | Start | Finish | Predecessors | Complete | Remaining | Actual finish | Total slack | Constraint | Resources | Work | Actual work |
| --- | --- | --- | --- | --- | --- | --- | --- | --- | --- | --- | --- | --- | --- | --- | --- |
| 1 | 1 | **订水平台开发** |  | 11.5d? | 2017-11-24 A | 2017-12-11 |  | 96% | 0.46d? |  |  |  |  | 2575.2h | 1039.2h |
| 2 | 1.1 | **会员基础信息** |  | 1d? | 2018-02-27 A | 2018-02-27 |  | 100% |  | 2018-03-05 |  |  |  | 70.4h | 70.4h |
| 3 | 1.1.1 | 会员基础信息 |  | 1d? | 2018-02-27 A | 2018-02-27 A |  | 100% |  |  |  |  | 彭宗阁 | 8h | 8h |
| 4 | 1.1.2 | 店铺信息 |  | 3.8d? | 2018-02-28 A | 2018-03-05 A | 3 | 100% |  |  |  | start no earlier than 2017-12-04 | 彭宗阁 | 30.4h | 30.4h |
| 5 | 1.1.3 | 工作人员信息 |  | 2d | 2018-02-28 A | 2018-03-01 A |  | 100% |  |  |  | start no earlier than 2018-02-28 | 彭宗阁 | 16h | 16h |
| 6 | 1.1.4 | 工作人员密码重置 |  | 1d? | 2018-03-02 A | 2018-03-02 A | 5 | 100% |  |  |  |  | 洪壮 | 8h | 8h |
| 7 | 1.1.5 | 会员地址信息 |  | 1d? | 2018-03-02 A | 2018-03-05 A | 6 | 100% |  |  |  |  | 洪壮 | 8h | 8h |
| 8 | 1.2 | **基础设置** |  | 3d | 2018-02-27 A | 2018-03-01 A |  | 100% |  |  |  |  |  | 24h | 24h |
| 9 | 1.2.1 | 仓库信息 |  | 1d? | 2018-02-27 A | 2018-02-27 A |  | 100% |  |  |  | start no earlier than 2018-02-27 | 彭宗阁 | 8h | 8h |
| 10 | 1.2.2 | 会员等级信息 |  | 1d? | 2018-02-28 A | 2018-02-28 A | 9 | 100% |  |  |  |  | 彭宗阁 | 8h | 8h |
| 11 | 1.2.3 | 品牌信息 |  | 1d? | 2018-03-01 A | 2018-03-01 A | 10 | 100% |  |  |  |  | 彭宗阁 | 8h | 8h |
| 12 | 1.3 | **商品** |  | 187d? | 2018-02-27 A | 2018-11-14 A |  | 100% |  |  |  |  |  | 116h | 116h |
| 13 | 1.3.1 | 商品分类 |  | 1d? | 2018-02-27 A | 2018-02-27 A |  | 100% |  |  |  | start no earlier than 2018-02-27 | 洪壮 | 8h | 8h |
| 14 | 1.3.2 | 商品列表 |  | 1d? | 2018-02-28 A | 2018-02-28 A |  | 100% |  |  |  | start no earlier than 2018-02-28 | 彭宗阁 | 8h | 8h |
| 15 | 1.3.3 | 商品显示 |  | 1.5d | 2018-03-01 A | 2018-03-02 A | 14 | 100% |  |  |  | start no earlier than 2018-02-28 | 彭宗阁 | 12h | 12h |
| 16 | 1.3.4 | 商品新增 |  | 2d | 2018-03-02 A | 2018-03-06 A | 15 | 100% |  |  |  |  | 彭宗阁 | 16h | 16h |
| 17 | 1.3.5 | 商品修改 |  | 1d? | 2018-03-06 A | 2018-03-07 A | 16 | 100% |  |  |  |  | 彭宗阁 | 8h | 8h |
| 18 | 1.3.6 | 商品删除（加验证） |  | 1d? | 2018-03-06 A | 2018-03-07 A | 16 | 100% |  |  |  |  | 彭宗阁 | 8h | 8h |
| 19 | 1.3.7 | 商品上下架操作 |  | 3d | 2018-02-28 A | 2018-03-02 A |  | 100% |  |  |  | start no earlier than 2018-02-28 | 彭宗阁 | 24h | 24h |
| 20 | 1.3.8 | 套餐促销 |  | 1d? | 2018-03-08 A | 2018-03-08 A | 218 | 100% |  |  |  |  | 彭宗阁 | 8h | 8h |
| 21 | 1.3.9 | 商品促销 |  | 3d | 2018-03-09 A | 2018-03-13 A | 20 | 100% |  |  |  |  | 彭宗阁 | 24h | 24h |
| 22 | 1.3.10 | 活动任务自动结束 | milestone | 0d? | 2018-11-14 A | 2018-11-14 A |  | 100% |  |  |  |  | 袁曾志 |  |  |
| 23 | 1.4 | **订单管理** |  | 190d? | 2018-02-27 A | 2018-11-19 |  | 99% | 0d? |  | 0d |  |  | 1608h | 112h |
| 24 | 1.4.1 | **水票订单管理** |  | 190d? | 2018-02-27 A | 2018-11-19 |  | 99% | 0d? |  | 0d |  | 洪壮 | 1552h | 56h |
| 25 | 1.4.1.1 | 水票订单列表 |  | 1d? | 2018-02-27 A | 2018-02-27 A |  | 100% |  |  |  | start no earlier than 2018-02-27 | 袁曾志 | 8h | 8h |
| 26 | 1.4.1.2 | 水票明细 |  | 1d? | 2018-02-28 A | 2018-02-28 A | 25 | 100% |  |  |  |  | 袁曾志 | 8h | 8h |
| 27 | 1.4.1.3 | 操作日志 |  | 1d? | 2018-03-01 A | 2018-03-01 A | 26 | 100% |  |  |  |  | 袁曾志 | 8h | 8h |
| 28 | 1.4.1.4 | 订单自动退款 |  | 1d? | 2018-11-19 A | 2018-11-19 A |  | 100% |  |  |  | start no earlier than 2018-11-19 | 袁曾志 | 8h | 8h |

| ID | WBS | Task | Duration | Start | Finish | Predecessors | Complete | Constraint | Resources | Work | Actual work |
| --- | --- | --- | --- | --- | --- | --- | --- | --- | --- | --- | --- |
| 29 | 1.4.2 | **配送订单** | 6.45d? | 2018-02-27 A | 2018-03-07 A |  | 100% |  |  | 56h | 56h |
| 30 | 1.4.2.1 | 订单查询 | 0.95d? | 2018-02-27 A | 2018-02-27 A |  | 100% | start no earlier than 2018-02-27 | 洪壮; 袁曾志 | 8h | 8h |
| 31 | 1.4.2.2 | 待付款订单 | 1d? | 2018-02-28 A | 2018-02-28 A | 30 | 100% |  | 洪壮; 袁曾志 | 8h | 8h |
| 32 | 1.4.2.3 | 待处理订单 | 1d? | 2018-03-01 A | 2018-03-01 A | 31 | 100% |  | 洪壮; 袁曾志 | 8h | 8h |
| 33 | 1.4.2.4 | 待发货订单 | 0.95d? | 2018-03-02 A | 2018-03-02 A | 32 | 100% |  | 洪壮; 袁曾志 | 8h | 8h |
| 34 | 1.4.2.5 | 订单完成 | 0.95d? | 2018-03-05 A | 2018-03-05 A | 33 | 100% |  | 洪壮; 袁曾志 | 8h | 8h |
| 35 | 1.4.2.6 | 已取消订单 | 0.95d? | 2018-03-06 A | 2018-03-06 A | 34 | 100% |  | 洪壮; 袁曾志 | 8h | 8h |
| 36 | 1.4.2.7 | 订单日志 | 0.5d? | 2018-03-06 A | 2018-03-07 A | 35 | 100% |  | 洪壮; 袁曾志 | 8h | 8h |
| 37 | 1.5 | **库存管理简板** | 2d | 2018-04-02 A | 2018-04-03 A |  | 100% |  |  | 16h | 16h |
| 38 | 1.5.1 | 库存增减 | 1d | 2018-04-02 A | 2018-04-02 A |  | 100% | start no earlier than 2018-04-02 | 彭宗阁 | 8h | 8h |
| 39 | 1.5.2 | 库存查询 | 0.5d | 2018-04-03 A | 2018-04-03 A | 38 | 100% | start no earlier than 2018-02-27 | 彭宗阁 | 4h | 4h |
| 40 | 1.5.3 | 库存明细 | 0.5d | 2018-04-03 A | 2018-04-03 A | 39 | 100% |  | 彭宗阁 | 4h | 4h |
| 41 | 1.6 | **会员小程序端** | 17d? | 2018-03-05 A | 2018-03-27 A |  | 100% |  |  | 112h | 112h |
| 42 | 1.6.1 | 个人注册 | 1d? | 2018-03-05 A | 2018-03-05 A |  | 100% | start no earlier than 2018-03-05 | 袁曾志 | 8h | 8h |
| 43 | 1.6.2 | 个人地址管理 | 0.9d? | 2018-03-06 A | 2018-03-06 A | 42, 219 | 100% |  | 洪壮; 彭宗阁 | 8h | 8h |
| 44 | 1.6.3 | 首页商品展现 | 1d? | 2018-03-12 A | 2018-03-12 A | 43 | 100% | start no earlier than 2018-03-12 | 计培 | 8h | 8h |
| 45 | 1.6.4 | 套餐展现 | 1d? | 2018-03-13 A | 2018-03-13 A | 44 | 100% |  | 计培 | 8h | 8h |
| 46 | 1.6.5 | 组合商品展现 | 2d | 2018-03-14 A | 2018-03-15 A | 45 | 100% |  | 计培 | 16h | 16h |
| 47 | 1.6.6 | 商品明细 | 1d? | 2018-03-16 A | 2018-03-16 A | 46 | 100% |  | 计培 | 8h | 8h |
| 48 | 1.6.7 | 商品结算 | 1d? | 2018-03-19 A | 2018-03-19 A | 47 | 100% |  | 袁曾志 | 8h | 8h |
| 49 | 1.6.8 | 水票展现 | 1d? | 2018-03-20 A | 2018-03-20 A | 48 | 100% |  | 袁曾志 | 8h | 8h |
| 50 | 1.6.9 | 订单展现 | 1d? | 2018-03-21 A | 2018-03-21 A | 49 | 100% |  | 袁曾志 | 8h | 8h |
| 51 | 1.6.10 | 水票结算 | 1d? | 2018-03-22 A | 2018-03-22 A | 50 | 100% |  | 袁曾志 | 8h | 8h |
| 52 | 1.6.11 | 支付接口 | 1d? | 2018-03-23 A | 2018-03-23 A | 51 | 100% |  | 袁曾志 | 8h | 8h |
| 53 | 1.6.12 | 微信授权 | 1d? | 2018-03-26 A | 2018-03-26 A | 52 | 100% |  | 袁曾志 | 8h | 8h |
| 54 | 1.6.13 | 个人信息 | 1d? | 2018-03-27 A | 2018-03-27 A | 53 | 100% |  | 彭宗阁 | 8h | 8h |

Notes:
- 47: 去年收藏
- 49: 完成后无法显示，列表中加载到最后还显示加载

| ID | WBS | Task | Duration | Start | Finish | Predecessors | Complete | Constraint | Resources | Work | Actual work |
| --- | --- | --- | --- | --- | --- | --- | --- | --- | --- | --- | --- |
| 55 | 1.7 | **工作人员手机端** | 9.7d? | 2018-03-05 A | 2018-03-16 A |  | 100% |  |  | 64h | 64h |
| 56 | 1.7.1 | 个人登陆 | 1d? | 2018-03-05 A | 2018-03-05 A |  | 100% | start no earlier than 2018-03-05 | 计培 | 8h | 8h |
| 57 | 1.7.2 | 修改密码 | 1d? | 2018-03-14 A | 2018-03-15 A |  | 100% |  | 计培 | 8h | 8h |
| 58 | 1.7.3 | 微信登陆 | 1d? | 2018-03-15 A | 2018-03-16 A | 57 | 100% |  | 计培 | 8h | 8h |
| 59 | 1.7.4 | 订单列表及发货 | 1d? | 2018-03-06 A | 2018-03-06 A | 56 | 100% |  | 计培 | 8h | 8h |
| 60 | 1.7.5 | 订单详情 | 1d? | 2018-03-07 A | 2018-03-07 A | 59 | 100% |  | 计培 | 8h | 8h |
| 61 | 1.7.6 | 配送列表 | 1d? | 2018-03-08 A | 2018-03-08 A | 60 | 100% |  |  |  |  |
| 62 | 1.7.7 | 配送详情 | 1d? | 2018-03-09 A | 2018-03-13 A | 61 | 100% |  | 计培 | 8h | 8h |
| 63 | 1.7.8 | 会员列表 | 1d? | 2018-03-08 A | 2018-03-13 A | 62, 60 | 100% |  | 计培 | 8h | 8h |
| 64 | 1.7.9 | 会员详情 | 1d? | 2018-03-09 A | 2018-03-13 A | 63 | 100% |  | 计培 | 8h | 8h |
| 65 | 1.8 | **扫码购物** | 104d? | 2017-11-24 A | 2018-04-18 A |  | 100% |  |  | 272.8h | 272.8h |
| 66 | 1.8.1 | **后台** | 102d? | 2017-11-24 A | 2018-04-16 A |  | 100% |  |  | 128h | 128h |
| 67 | 1.8.1.1 | 后台与柜子互动 | 4d | 2018-04-10 A | 2018-04-13 A |  | 100% | start no earlier than 2018-04-10 | 洪壮; 袁曾志 | 64h | 64h |
| 68 | 1.8.1.2 | 后台柜子新增及修改 | 1d? | 2018-04-10 A | 2018-04-10 A |  | 100% | start no earlier than 2018-04-10 | 彭宗阁 | 8h | 8h |
| 69 | 1.8.1.3 | 柜子二维码生成 | 1d? | 2018-04-11 A | 2018-04-11 A | 68 | 100% |  | 彭宗阁 | 8h | 8h |
| 70 | 1.8.1.4 | 箱子初始化数据 | 2d? | 2018-04-12 A | 2018-04-13 A | 69 | 100% |  | 彭宗阁 | 16h | 16h |
| 71 | 1.8.1.5 | 箱子明细查询 | 1d? | 2018-04-13 A | 2018-04-16 A | 70 | 100% |  | 彭宗阁 | 8h | 8h |
| 72 | 1.8.1.6 | 开箱记录查询 | 1d | 2018-04-16 A | 2018-04-16 A | 71 | 100% |  | 彭宗阁 | 8h | 8h |
| 73 | 1.8.1.7 | 更新商品库存 | 1d? | 2017-11-24 A | 2017-11-24 A |  | 100% |  | 彭宗阁 | 8h | 8h |
| 74 | 1.8.1.8 | 柜子与商品作关联 | 1d? | 2017-11-24 A | 2017-11-24 A |  | 100% |  | 彭宗阁 | 8h | 8h |
| 75 | 1.8.2 | **工作人员手机端** | 6d? | 2018-04-11 A | 2018-04-18 A |  | 100% |  |  | 64.8h | 64.8h |
| 76 | 1.8.2.1 | 柜子列表及明细查询 | 0.1d? | 2018-04-11 A | 2018-04-11 A |  | 100% | start no earlier than 2018-04-11 | 计培 | 0.8h | 0.8h |
| 77 | 1.8.2.2 | 柜子基础信息修改 | 1d? | 2018-04-12 A | 2018-04-12 A | 76 | 100% |  | 彭宗阁; 计培 | 16h | 16h |
| 78 | 1.8.2.3 | 柜子补货（全部补货，指定箱补货） | 2d | 2018-04-13 A | 2018-04-16 A | 77 | 100% | start no earlier than 2018-04-10 | 彭宗阁; 计培 | 32h | 32h |
| 79 | 1.8.2.4 | 柜子维护开箱 | 1d | 2018-04-17 A | 2018-04-17 A | 78 | 100% |  | 彭宗阁; 计培 | 16h | 16h |
| 80 | 1.8.2.5 | 业务员查看水票使用记录 | 1d? | 2018-04-18 A | 2018-04-18 A | 79 | 100% |  |  |  |  |

| ID | WBS | Task | Duration | Start | Finish | Predecessors | Complete | Constraint | Resources | Work | Actual work |
| --- | --- | --- | --- | --- | --- | --- | --- | --- | --- | --- | --- |
| 81 | 1.8.3 | **微信小程序端** | 9d | 2018-04-03 A | 2018-04-13 A |  | 100% |  |  | 80h | 80h |
| 82 | 1.8.3.1 | 页面设计 | 4d | 2018-04-03 A | 2018-04-06 A |  | 100% | start no earlier than 2018-04-03 | 彭宗阁 | 32h | 32h |
| 83 | 1.8.3.2 | 手机端扫码购开发 | 3d | 2018-04-10 A | 2018-04-12 A |  | 100% | start no earlier than 2018-04-10 | 袁曾志 | 24h | 24h |
| 84 | 1.8.3.3 | 订单成功及修改水票数量 | 1d | 2018-04-11 A | 2018-04-11 A | 83 | 100% |  | 袁曾志 | 8h | 8h |
| 85 | 1.8.3.4 | 订单成功开箱 | 1d | 2018-04-12 A | 2018-04-12 A | 84 | 100% |  | 袁曾志 | 8h | 8h |
| 86 | 1.8.3.5 | 订单失败退回水票 | 1d | 2018-04-13 A | 2018-04-13 A | 85 | 100% |  | 袁曾志 | 8h | 8h |
| 87 | 1.9 | **水票赠送** | 3d? | 2018-05-07 A | 2018-05-09 A |  | 100% |  |  | 16h | 16h |
| 88 | 1.9.1 | 水票赠送好友微信 | 1d? | 2018-05-07 A | 2018-05-07 A |  | 100% | start no earlier than 2018-05-07 | 彭宗阁 | 8h | 8h |
| 89 | 1.9.2 | 查看本人赠送及收到的赠送 | 1d? | 2018-05-09 A | 2018-05-09 A | 88 | 100% |  | 彭宗阁 | 8h | 8h |
| 90 | 1.10 | **多城市** | 7d? | 2018-05-02 A | 2018-05-10 A |  | 100% |  |  | 56h | 56h |
| 91 | 1.10.1 | 小程序登陆页面城市选择 | 2d | 2018-05-02 A | 2018-05-03 A |  | 100% | start no earlier than 2018-05-02 | 袁曾志 | 16h | 16h |
| 92 | 1.10.2 | 多城市过滤商品() | 2d | 2018-05-04 A | 2018-05-07 A | 91 | 100% |  | 袁曾志 | 16h | 16h |
| 93 | 1.10.3 | 城市管理 | 1d? | 2018-05-08 A | 2018-05-08 A | 92 | 100% |  | 袁曾志 | 8h | 8h |
| 94 | 1.10.4 | 给商家分配城市 | 1d? | 2018-05-09 A | 2018-05-09 A | 93 | 100% |  | 袁曾志 | 8h | 8h |
| 95 | 1.10.5 | 后台多公司账号登陆系统 | 1d? | 2018-05-10 A | 2018-05-10 A | 94 | 100% |  | 袁曾志 | 8h | 8h |
| 96 | 1.11 | **用户权限** | 2d | 2018-05-15 A | 2018-05-16 A |  | 100% |  |  | 16h | 16h |
| 97 | 1.11.1 | 用户角色 | 0.5d | 2018-05-15 A | 2018-05-15 A |  | 100% | start no earlier than 2018-05-15 | 袁曾志 | 4h | 4h |
| 98 | 1.11.2 | 菜单 | 0.5d | 2018-05-15 A | 2018-05-15 A | 97 | 100% |  | 袁曾志 | 4h | 4h |
| 99 | 1.11.3 | 菜单角色 | 0.5d | 2018-05-16 A | 2018-05-16 A | 98 | 100% |  | 袁曾志 | 4h | 4h |
| 100 | 1.11.4 | 用户角色 | 0.5d | 2018-05-16 A | 2018-05-16 A | 99 | 100% |  | 袁曾志 | 4h | 4h |
| 101 | 1.12 | **团购** | 9d | 2018-05-28 A | 2018-06-07 A |  | 100% |  |  | 124h | 124h |
| 102 | 1.12.1 | 页面设计 | 2d | 2018-05-28 A | 2018-05-29 A |  | 100% | start no earlier than 2018-05-28 | 彭宗阁 | 16h | 16h |
| 103 | 1.12.2 | 产品设置 | 2d | 2018-05-30 A | 2018-05-31 A | 102 | 100% |  | 彭宗阁 | 16h | 16h |
| 104 | 1.12.3 | 营销设计 | 1.5d | 2018-05-31 A | 2018-06-01 A | 103 | 100% |  | 彭宗阁 | 12h | 12h |
| 105 | 1.12.4 | 后台程序修改 | 2d | 2018-06-01 A | 2018-06-05 A | 104 | 100% |  | 彭宗阁 | 16h | 16h |
| 106 | 1.12.5 | 小程序修改 | 3d | 2018-05-29 A | 2018-05-31 A |  | 100% |  | 袁曾志 | 24h | 24h |
| 107 | 1.12.6 | 订单生成 | 2d | 2018-06-01 A | 2018-06-04 A | 106 | 100% |  | 袁曾志 | 16h | 16h |
| 108 | 1.12.7 | 团购订单手机查询 | 3d | 2018-06-05 A | 2018-06-07 A | 107 | 100% |  | 李计培 | 24h | 24h |

| ID | WBS | Task | Type | Duration | Start | Finish | Predecessors | Complete | Remaining | Total slack | Constraint | Resources | Work | Actual work |
| --- | --- | --- | --- | --- | --- | --- | --- | --- | --- | --- | --- | --- | --- | --- |
| 109 | 1.13 | **试用申请** |  | 123d? | 2017-11-24 A | 2018-05-15 A |  | 100% |  |  |  |  | 32h | 32h |
| 110 | 1.13.1 | 试用列表 |  | 1d? | 2018-05-11 A | 2018-05-11 A |  | 100% |  |  |  | 彭宗阁 | 8h | 8h |
| 111 | 1.13.2 | 试用申请 |  | 1d? | 2018-05-14 A | 2018-05-14 A | 110 | 100% |  |  | start no earlier than 2018-05-14 | 彭宗阁 | 8h | 8h |
| 112 | 1.13.3 | 试用后台添加申请 |  | 1d? | 2018-05-15 A | 2018-05-15 A | 111 | 100% |  |  |  | 彭宗阁 | 8h | 8h |
| 113 | 1.13.4 | 试用手机端处理 |  | 1d? | 2017-11-24 A | 2017-11-24 A |  | 100% |  |  |  | 李计培 | 8h | 8h |
| 114 | 1.14 | **迭代开发任务** |  | 1d? | 2017-11-24 A | 2017-11-24 |  | 17% | 0.83d? | 10.5d |  |  | 48h | 8h |
| 115 | 1.14.1 | 针对没有付款订单自动取消+加时间提示，消息推送 |  | 1d? | 2017-11-24 | 2017-11-24 |  |  |  | 10.5d |  | 彭宗阁 | 8h |  |
| 116 | 1.14.2 | 补货功能完善 |  | 1d? | 2017-11-24 A | 2017-11-24 A |  | 100% |  |  |  | 李计培 | 8h | 8h |
| 117 | 1.14.3 | 套餐活动里商品可查看，点击到商品详情（小程序） |  | 1d? | 2017-11-24 | 2017-11-24 |  |  |  | 10.5d |  | 彭宗阁 | 8h |  |
| 118 | 1.14.4 | 水票列表、订单列表查询优化（加日志记录，样式调整） |  | 1d? | 2017-11-24 | 2017-11-24 |  |  |  | 10.5d |  | 彭宗阁 | 8h |  |
| 119 | 1.14.5 | 活动商品只展现一个 |  | 1d? | 2017-11-24 | 2017-11-24 |  |  |  | 10.5d |  | 袁曾志 | 8h |  |
| 120 | 1.14.6 | 结算单里加配送时间 |  | 1d? | 2017-11-24 | 2017-11-24 |  |  |  | 10.5d |  | 袁曾志 | 8h |  |
| 121 | 2 | **水柜订水（新）** |  | 3148d? | 2006-10-27 A | 2018-11-20 |  | 90% | 307.42d? | 3134.2d |  |  | 425.6h | 425.6h |
| 122 | 2.1 | **后台** |  | 3103d? | 2006-10-27 A | 2018-09-18 A |  | 100% |  |  |  |  | 88h | 88h |
| 123 | 2.1.1 | 查询柜子商品信息 | manual | 1d | 2018-09-04 A | 2018-09-04 A |  | 100% |  |  |  | 袁曾志 | 8h | 8h |
| 124 | 2.1.2 | 广告图 | manual | 1d | 2018-09-05 A | 2018-09-05 A |  | 100% |  |  |  | 彭宗阁 | 8h | 8h |
| 125 | 2.1.3 | 上报柜子状态接口 | manual | 1d | 2018-09-06 A | 2018-09-06 A |  | 100% |  |  |  | 彭宗阁 | 8h | 8h |
| 126 | 2.1.4 | 生成支付二维码接口 |  | 1d | 2018-09-07 A | 2018-09-07 A | 125 | 100% |  |  | finish no earlier than 2018-09-06 | 袁曾志; 彭宗阁 | 16h | 16h |
| 127 | 2.1.5 | 柜子运行日志记录 |  | 1d? | 2018-09-18 A | 2018-09-18 A |  | 100% |  |  | start no earlier than 2018-09-18 | 彭宗阁 | 8h | 8h |
| 128 | 2.1.6 | 后台检测柜子上报时间自动任务 |  | 1d? | 2018-09-18 A | 2018-09-18 A |  | 100% |  |  | start no earlier than 2018-09-18 | 袁曾志 | 8h | 8h |
| 129 | 2.1.7 | 生成订单扣减库存 | manual | 2d | 2018-09-05 A | 2018-09-06 A |  | 100% |  |  |  | 袁曾志 | 16h | 16h |
| 130 | 2.1.8 | 推荐人发放奖励 |  | 1d? | 2006-10-27 A | 2006-10-27 A |  | 100% |  |  |  | 彭宗阁 | 8h | 8h |
| 131 | 2.1.9 | 订单奖励金额支付 |  | 1d? | 2006-10-27 A | 2006-10-27 A |  | 100% |  |  |  | 袁曾志 | 8h | 8h |
| 132 | 2.2 | **微信小程序端** |  | 2d | 2018-09-18 A | 2018-09-19 A |  | 100% |  |  |  |  | 32h | 32h |
| 133 | 2.2.1 | 小程序使用水票扫码购买 | manual | 2d | 2018-09-18 A | 2018-09-19 A |  | 100% |  |  |  | 彭宗阁 | 16h | 16h |
| 134 | 2.2.2 | 优化取水结果界面 |  | 1d? | 2018-09-18 A | 2018-09-18 A |  | 100% |  |  |  |  |  |  |
| 135 | 2.2.3 | 充值余额 |  | 1d? | 2018-09-18 A | 2018-09-18 A |  | 100% |  |  |  | 彭宗阁 | 8h | 8h |
| 136 | 2.2.4 | 充值明细 |  | 1d? | 2018-09-18 A | 2018-09-18 A |  | 100% |  |  |  | 彭宗阁 | 8h | 8h |

| ID | WBS | Task | Type | Duration | Start | Finish | Predecessors | Complete | Actual start | Actual finish | Total slack | Free slack | Constraint | Resources | Work | Actual work |
| --- | --- | --- | --- | --- | --- | --- | --- | --- | --- | --- | --- | --- | --- | --- | --- | --- |
| 137 | 2.3 | **水柜app** |  | 5d | 2018-09-18 A | 2018-09-24 |  | 100% |  | 2018-09-18 |  |  |  |  | 88h | 88h |
| 138 | 2.3.1 | 水柜初始化 |  | 1d? | 2018-09-18 A | 2018-09-18 A |  | 100% |  |  |  |  |  | 李计培 | 8h | 8h |
| 139 | 2.3.2 | 商品展示 | manual | 1d | 2018-09-18 A | 2018-09-18 A |  | 100% |  |  |  |  |  | 李计培 | 8h | 8h |
| 140 | 2.3.3 | 微信支付界面 | manual | 1d | 2018-09-18 A | 2018-09-18 A |  | 100% |  |  |  |  |  | 李计培 | 8h | 8h |
| 141 | 2.3.4 | 会员水票支付 | manual | 1d | 2018-09-18 A | 2018-09-18 A |  | 100% |  |  |  |  |  | 李计培 | 8h | 8h |
| 142 | 2.3.5 | 广告展示 | manual | 1d | 2018-09-18 A | 2018-09-18 A |  | 100% |  |  |  |  |  | 李计培 | 8h | 8h |
| 143 | 2.3.6 | 应用自动重启功能（无网） | manual | 1d | 2018-09-18 A | 2018-09-18 A |  | 100% |  |  |  |  |  | 李计培 | 8h | 8h |
| 144 | 2.3.7 | 异常展示页面 |  | 1d? | 2018-09-18 A | 2018-09-18 A |  | 100% |  |  |  |  |  |  |  |  |
| 145 | 2.3.8 | 上送柜子信息 |  | 1d? | 2018-09-18 A | 2018-09-18 A |  | 100% |  |  |  |  |  | 李计培 | 8h | 8h |
| 146 | 2.3.9 | 版本更新 | manual | 1d | 2018-09-18 A | 2018-09-18 A |  | 100% |  |  |  |  |  | 李计培 | 8h | 8h |
| 147 | 2.3.10 | 管理员登录 | manual | 1d | 2018-09-18 A | 2018-09-18 A |  | 100% |  |  |  |  |  | 李计培 | 8h | 8h |
| 148 | 2.3.11 | PLC测试小工具 |  | 1d? | 2018-09-18 A | 2018-09-18 A |  | 100% |  |  |  |  |  | 李计培 | 8h | 8h |
| 149 | 2.3.12 | 管理员类型（是否能修改plc配置） |  | 1d? | 2018-09-18 A | 2018-09-18 A |  | 100% |  |  |  |  |  | 李计培 | 8h | 8h |
| 150 | 2.4 | **水柜与硬件通讯** |  | 7d | 2018-09-18 A | 2018-09-26 |  | 100% |  | 2018-09-28 |  |  |  |  | 72h | 72h |
| 151 | 2.4.1 | 查询柜子状态 |  | 3d | 2018-09-18 A | 2018-09-20 A |  | 100% |  |  |  |  |  | 袁曾志 | 24h | 24h |
| 152 | 2.4.2 | 取水操作 | manual | 4d | 2018-09-21 A | 2018-09-26 A | 151 | 100% |  |  |  |  |  | 袁曾志 | 32h | 32h |
| 153 | 2.4.3 | 补水操作 |  | 2d | 2018-09-27 A | 2018-09-28 A | 152 | 100% |  |  |  |  | start no earlier than 2018-09-18 | 袁曾志 | 16h | 16h |
| 154 | 2.5 | **系统联调** |  | 1d? | 2018-09-18 | 2018-09-18 |  | 100% | 2018-09-20 | 2018-09-27 |  |  |  |  | 96h | 96h |
| 155 | 2.5.1 | APP与PLC联调 |  | 2d | 2018-09-20 A | 2018-09-21 A |  | 100% |  |  |  |  | start no earlier than 2018-09-20 | 李计培; 彭宗阁; 袁曾志 | 48h | 48h |
| 156 | 2.5.2 | 青县柜子整体联调 |  | 2d | 2018-09-26 A | 2018-09-27 A |  | 100% |  |  |  |  | start no earlier than 2018-09-26 | 李计培; 彭宗阁; 袁曾志 | 48h | 48h |
| 157 | 2.6 | **报表** |  | 5d? | 2018-09-20 | 2018-09-26 |  |  |  |  | 3173.2d |  |  |  |  |  |
| 158 | 2.6.1 | 首页报表 |  | 1d? | 2018-09-20 | 2018-09-20 |  |  |  |  | 3173.2d | 0d | start no earlier than 2018-09-20 |  |  |  |
| 159 | 2.6.2 | 数据概览 |  | 1d? | 2018-09-21 | 2018-09-21 | 158 |  |  |  | 3173.2d | 0d |  |  |  |  |
| 160 | 2.6.3 | 交易分析 |  | 1d? | 2018-09-24 | 2018-09-24 | 159 |  |  |  | 3173.2d | 0d |  |  |  |  |
| 161 | 2.6.4 | 客户分析 |  | 1d? | 2018-09-25 | 2018-09-25 | 160 |  |  |  | 3173.2d | 0d |  |  |  |  |
| 162 | 2.6.5 | 交易明细 |  | 1d? | 2018-09-26 | 2018-09-26 | 161 |  |  |  | 3173.2d |  |  |  |  |  |

| ID | WBS | Task | Duration | Start | Finish | Complete | Remaining | Actual finish | Total slack | Free slack | Constraint | Resources | Work | Actual work |
| --- | --- | --- | --- | --- | --- | --- | --- | --- | --- | --- | --- | --- | --- | --- |
| 163 | 2.7 | **业务员手机app** | 1d? | 2018-11-12 A | 2018-11-12 | 100% |  | 2018-11-20 |  |  |  |  | 49.6h | 49.6h |
| 164 | 2.7.1 | 柜子异常警告信息 | 4d? | 2018-11-15 A | 2018-11-20 A | 100% |  |  |  |  | finish no earlier than 2018-11-20 | 李计培 | 32h | 32h |
| 165 | 2.7.2 | 查看用户优惠券列表 | 1d? | 2018-11-12 A | 2018-11-12 A | 100% |  |  |  |  |  | 李计培 | 8h | 8h |
| 166 | 2.7.3 | 柜子关联商品 | 0.2d? | 2018-11-12 A | 2018-11-12 A | 100% |  |  |  |  |  | 彭宗阁 | 1.6h | 1.6h |
| 167 | 2.7.4 | 初始化柜子信息 | 1d? | 2018-11-12 A | 2018-11-12 A | 100% |  |  |  |  |  | 李计培 | 8h | 8h |
| 168 | 3 | **账户充值及交易** | 5d | 2018-10-15 A | 2018-10-19 | 68% | 1.62d |  |  |  |  |  | 239.2h | 167.2h |
| 169 | 3.1 | **后台** | 6d? | 2018-10-15 A | 2018-10-22 | 69% | 1.85d? |  | 0d |  |  |  | 104h | 72h |
| 170 | 3.1.1 | 充值商品设置（后台） | 1d? | 2018-10-22 A | 2018-10-22 A | 100% |  |  |  |  |  | 彭宗阁 | 8h | 8h |
| 171 | 3.1.2 | 充值订单生成 | 2d? | 2018-10-17 A | 2018-10-18 A | 100% |  |  |  |  | finish no earlier than 2018-10-18 | 彭宗阁 | 16h | 16h |
| 172 | 3.1.3 | 更新账户余额 | 2d? | 2018-10-17 A | 2018-10-18 A | 100% |  |  |  |  | finish no earlier than 2018-10-18 | 彭宗阁 | 16h | 16h |
| 173 | 3.1.4 | 账户列表及明细 | 1d? | 2018-10-15 A | 2018-10-15 A | 100% |  |  |  |  |  | 彭宗阁 | 8h | 8h |
| 174 | 3.1.5 | 小程序取水失败时，退还余额、水票或优惠券 | 1d? | 2018-10-16 A | 2018-10-16 A | 100% |  |  |  |  | finish no earlier than 2018-10-16 | 袁曾志 | 8h | 8h |
| 175 | 3.1.6 | 取水订单退款自动任务 | 2d? | 2018-10-15 A | 2018-10-16 A | 100% |  |  |  |  | start no earlier than 2018-10-15 | 袁曾志 | 16h | 16h |
| 176 | 3.1.7 | 后台初始化柜子流程要简化 | 1d? | 2018-10-15 | 2018-10-15 |  |  |  | 3160.2d |  |  | 袁曾志 | 8h |  |
| 177 | 3.1.8 | 后台初始化柜子流程要简化 | 1d? | 2018-10-15 | 2018-10-15 |  |  |  | 3160.2d |  |  | 袁曾志 | 8h |  |
| 178 | 3.1.9 | 后台初始化经销商流程要简化 | 1d? | 2018-10-15 | 2018-10-15 |  |  |  | 3160.2d |  |  | 袁曾志 | 8h |  |
| 179 | 3.1.10 | 水票有效期 | 1d? | 2018-10-15 | 2018-10-15 |  |  |  | 3160.2d |  |  | 袁曾志 | 8h |  |
| 180 | 3.2 | **小程序** | 26d? | 2018-10-15 A | 2018-11-19 | 66% | 8.71d? |  | -19d | 0d |  |  | 135.2h | 95.2h |
| 181 | 3.2.1 | 用户充值 | 1.9d? | 2018-10-15 A | 2018-10-16 A | 100% |  |  |  |  |  | 彭宗阁 | 15.2h | 15.2h |
| 182 | 3.2.2 | 充值记录 | 1d? | 2018-10-15 A | 2018-10-15 A | 100% |  |  |  |  |  | 彭宗阁 | 8h | 8h |
| 183 | 3.2.3 | 充值规则 | 1d? | 2018-10-15 A | 2018-10-15 A | 100% |  |  |  |  |  | 彭宗阁 | 8h | 8h |
| 184 | 3.2.4 | 水柜扫码结算支持余额或水票 优惠券支付 | 2d? | 2018-10-15 A | 2018-10-16 A | 100% |  |  |  |  | finish no earlier than 2018-10-16 | 袁曾志 | 16h | 16h |
| 185 | 3.2.5 | 小程序结算页面修改(余额或水票 优惠券支付) 样式 | 2d? | 2018-10-15 A | 2018-10-16 A | 100% |  |  |  |  | finish no earlier than 2018-10-16 | 彭宗阁 | 16h | 16h |
| 186 | 3.2.6 | 小程序扫码取水页面修改 | 1d? | 2018-10-15 A | 2018-10-15 A | 100% |  |  |  |  |  | 彭宗阁 | 8h | 8h |
| 187 | 3.2.7 | 小程序充值页面 | 1d? | 2018-10-15 A | 2018-10-15 A | 100% |  |  |  |  |  | 彭宗阁 | 8h | 8h |
| 188 | 3.2.8 | 提示用户注册送余额 | 2d | 2018-10-22 A | 2018-10-23 A | 100% |  |  |  |  | start no earlier than 2018-10-22 | 彭宗阁 | 16h | 16h |
| 189 | 3.2.9 | 水票有效期展示 | 1d? | 2018-11-19 | 2018-11-19 |  |  |  | -21d | 0d | start no earlier than 2018-11-19 | 袁曾志 | 8h |  |
| 190 | 3.2.10 | 小程序统计功能 | 1d? | 2018-10-15 | 2018-10-15 |  |  |  | 3160.2d |  |  |  |  |  |
| 191 | 3.2.11 | 个人推荐海报 | 4d | 2018-10-15 | 2018-10-18 |  |  |  | 3157.2d |  |  | 彭宗阁 | 32h |  |

| ID | WBS | Task | Type | Duration | Start | Finish | Predecessors | Complete | Remaining | Actual start | Actual finish | Total slack | Free slack | Constraint | Resources | Work | Actual work |
| --- | --- | --- | --- | --- | --- | --- | --- | --- | --- | --- | --- | --- | --- | --- | --- | --- | --- |
| 192 | 4 | **水柜迭代功能** |  | 3153d? | 2006-10-27 A | 2018-11-27 |  | 69% | 977.43d? |  |  | 3129.2d |  |  |  | 68h | 51.2h |
| 193 | 4.1 | 添加屏保 |  | 0.5d | 2018-10-15 A | 2018-10-15 A |  | 100% |  |  |  |  |  | start no earlier than 2018-10-15 | 李计培 | 4h | 4h |
| 194 | 4.2 | 添加商品选择功能 |  | 0.5d? | 2018-10-15 A | 2018-10-15 A | 193 | 100% |  |  |  |  |  |  | 李计培 | 4h | 4h |
| 195 | 4.3 | 语音提示 |  | 1d? | 2018-10-22 A | 2018-10-22 A |  | 100% |  |  |  |  |  | start no earlier than 2018-10-22 | 李计培 | 8h | 8h |
| 196 | 4.4 | 摄相头 |  | 2d | 2018-11-26 | 2018-11-27 |  |  |  |  |  | 3129.2d |  | start no earlier than 2018-11-26 | 李计培 | 16h |  |
| 197 | 4.5 | 添加自定义键盘 |  | 0.5d? | 2018-10-24 A | 2018-10-24 A | 196 | 100% |  |  |  |  |  |  | 李计培 | 4h | 4h |
| 198 | 4.6 | 登陆后可以修改域名（后台添加域名验证接口） |  | 1d? | 2018-10-24 A | 2018-10-25 A | 197 | 100% |  |  |  |  |  |  | 李计培 | 8h | 8h |
| 199 | 4.7 | 扫码登陆 |  | 0.5d? | 2018-10-25 A | 2018-10-25 A | 198 | 100% |  |  |  |  |  |  | 李计培; 彭宗阁 | 8h | 8h |
| 200 | 4.8 | 配置参数开发（空调，灯箱） |  | 1d? | 2018-10-22 A | 2018-10-22 A |  | 100% |  |  |  |  |  | start no earlier than 2018-10-22 | 李计培 | 8h | 8h |
| 201 | 4.9 | 业务员端支持多店铺人员登陆 |  | 1d? | 2018-11-19 A | 2018-11-19 |  | 90% | 0.1d? |  |  | 3135.2d |  | start no earlier than 2018-11-19 | 李计培 | 8h | 7.2h |
| 202 | 4.10 | 水柜向外调拨 |  | 1d? | 2006-10-27 | 2006-10-27 |  |  |  |  |  | 6281.2d |  |  |  |  |  |
| 203 | 4.11 | 业务员app端订单增加优惠券信息 |  | 1d? | 2006-10-27 A | 2006-10-27 A |  | 100% |  |  |  |  |  |  |  |  |  |
| 204 | 5 | **营销工具** |  | 1d? | 2018-11-12 A | 2018-11-12 |  | 67% | 0.33d? |  |  |  |  |  |  | 48h | 32h |
| 205 | 5.1 | **优惠券** |  | 3141.2d? | 2018-11-12 A | 2030-11-26 |  | 100% |  |  | 2018-11-12 |  |  |  |  | 16h | 16h |
| 206 | 5.1.1 | 后台管理 |  | 1d? | 2018-11-12 A | 2018-11-12 A |  | 100% |  |  |  |  |  |  | 彭宗阁 | 8h | 8h |
| 207 | 5.1.2 | 小程序端 |  | 1d? | 2018-11-12 A | 2018-11-12 A |  | 100% |  |  |  |  |  |  | 袁曾志 | 8h | 8h |
| 208 | 5.2 | **九宫格抽奖** |  | 1d? | 2018-11-12 | 2018-11-12 |  |  |  |  |  | 0d |  |  |  | 16h |  |
| 209 | 5.2.1 | 后台管理 |  | 1d? | 2018-11-12 | 2018-11-12 |  |  |  |  |  | 0d |  |  | 彭宗阁 | 8h |  |
| 210 | 5.2.2 | 小程序端 |  | 1d? | 2018-11-12 | 2018-11-12 |  |  |  |  |  | 0d |  |  | 袁曾志 | 8h |  |
| 211 | 5.3 | **注册奖励** |  | 1d? | 2018-11-12 A | 2018-11-12 A |  | 100% |  |  |  |  |  |  |  | 16h | 16h |
| 212 | 5.3.1 | 后台管理 |  | 1d? | 2018-11-12 A | 2018-11-12 A |  | 100% |  |  |  |  |  |  | 彭宗阁 | 8h | 8h |
| 213 | 5.3.2 | 小程序端 |  | 1d? | 2018-11-12 A | 2018-11-12 A |  | 100% |  |  |  |  |  |  | 彭宗阁 | 8h | 8h |
| 214 | 6 | **其它** |  | 3137d? | 2018-11-12 | 2030-11-19 |  | 20% | 2496.53d? | 2018-02-28 |  |  |  |  |  | 192h | 39.2h |
| 215 | 6.1 | 查看水柜申请 |  | 1d? | 2018-11-12 A | 2018-11-12 A |  | 100% |  |  |  |  |  |  | 彭宗阁 | 8h | 8h |
| 216 | 6.2 | 展现附近水柜 |  | 1d? | 2018-11-05 A | 2018-11-05 A |  | 100% |  |  |  |  |  | start no earlier than 2018-11-05 | 彭宗阁 | 8h | 8h |
| 217 | 6.3 | 组合促销 |  | 3d | 2018-02-28 | 2018-03-02 |  |  |  |  |  | 3314d | 180d | start no earlier than 2018-02-28 | 彭宗阁 | 24h |  |
| 218 | 6.4 | 订单促铺 |  | 3d | 2018-11-12 | 2018-11-14 | 217, 19 |  |  |  |  | 3134d |  |  | 彭宗阁 | 24h |  |
| 219 | 6.5 | 个人二维码 |  | 1d? | 2018-03-05 | 2018-03-05 |  |  |  |  |  | 3320.2d |  | start no earlier than 2018-03-05 | 彭宗阁 | 8h |  |
| 220 | 6.6 | 代会员下单 |  | 3d | 2018-04-25 A | 2018-04-27 |  | 80% | 0.6d |  |  | 3280.2d | 0d | start no earlier than 2018-04-25 | 计培 | 24h | 19.2h |
| 221 | 6.7 | 统计 |  | 1d? | 2018-04-30 | 2018-04-30 | 220, 58 |  |  |  |  | 3280.2d |  | start no earlier than 2018-03-12 | 计培 | 8h |  |
| 222 | 6.8 | 水票赠送生成二维码（对方扫码） |  | 1d? | 2018-11-12 | 2018-11-12 | 88 |  |  |  |  | 3136d | 4d |  |  |  |  |
| 223 | 6.9 | 过期未领取退回水票 |  | 1d? | 2018-11-19 | 2018-11-19 | 222 |  |  |  |  | 3135.2d |  | start no earlier than 2018-11-19 |  |  |  |
| 224 | 6.10 | 经销商只能看到当前城市会员，无法修改 |  | 1d? | 2018-11-12 | 2018-11-12 | 95 |  |  |  |  | 3136d |  |  | 袁曾志 | 8h |  |
| 225 | 6.11 | 推广码展现 |  | 1d? | 2018-11-12 | 2018-11-12 |  |  |  |  |  | 3136d |  |  | 彭宗阁 | 8h |  |
| 226 | 6.12 | 订单手动退款 | manual | 3d? | 2018-11-12 | 2018-11-14 |  |  |  |  |  |  |  |  | 袁曾志; 卢海影 | 48h |  |
| 227 | 6.13 | 柜子表扩展 | manual | 1d | 2018-11-12 | 2018-11-12 |  |  |  |  |  |  |  |  | 彭宗阁 | 8h |  |
| 228 | 6.14 | PLC盘库的功能 |  | 1d? | 2018-11-12 | 2018-11-12 |  |  |  |  |  | 3136d |  |  |  |  |  |
| 229 | 6.15 | 视频上传 |  | 1d? | 2018-09-18 | 2018-09-18 |  |  |  |  |  | 3179.2d |  | start no earlier than 2018-09-18 | 彭宗阁 | 8h |  |
| 230 | 6.16 | 上水石官网 |  | 1d? | 2018-11-12 A | 2018-11-12 |  | 50% | 0.5d? |  |  | 3136d |  |  | 彭宗阁 | 8h | 4h |
| 231 | 7 | 发票 |  | 1d? | 2018-11-12 | 2018-11-12 |  |  |  |  |  | 3140.2d |  | start no earlier than 2018-11-12 |  |  |  |
| 232 | 8 | 领导报表 |  | 1d? | 2018-11-12 | 2018-11-12 |  |  |  |  |  | 3140.2d |  | start no earlier than 2018-11-12 |  |  |  |

| ID | WBS | Task | Type | Duration | Start | Finish | Complete | Remaining | Total slack | Resources | Work | Actual work |
| --- | --- | --- | --- | --- | --- | --- | --- | --- | --- | --- | --- | --- |
| 233 | 9 | **水柜A02升级迭代** |  | 79d | 2018-09-04 A | 2018-12-21 | 10% | 71.1d | 0d |  | 112h | 8h |
| 234 | 9.1 | **后台** |  | 1d | 2018-09-04 A | 2018-09-04 | 50% | 0.5d | 0d |  | 16h | 8h |
| 235 | 9.1.1 | 柜子关联两件商品 | manual | 1d | 2018-09-04 A | 2018-09-04 A | 100% |  |  | 彭宗阁 | 8h | 8h |
| 236 | 9.1.2 | 添加多商品接口 | manual | 1d | 2018-09-04 | 2018-09-04 |  |  |  | 袁曾志 | 8h |  |
| 237 | 9.2 | **大屏APP** |  | 5d | 2018-12-12 | 2018-12-18 |  |  |  |  | 96h |  |
| 238 | 9.2.1 | 修改选择商品界面 | manual | 1d | 2018-12-12 | 2018-12-12 |  |  |  | 李计培 | 8h |  |
| 239 | 9.2.2 | 修改选择补货方式 |  | 1d? | 2018-12-12 | 2018-12-12 |  |  | 4d | 李计培 | 8h |  |
| 240 | 9.2.3 | 补货时添加选择商品界面 |  | 1d? | 2018-12-12 | 2018-12-12 |  |  | 4d | 李计培 | 8h |  |
| 241 | 9.2.4 | 修改补货方式为单仓补货 |  | 2d | 2018-12-12 | 2018-12-13 |  |  | 3d | 李计培 | 16h |  |
| 242 | 9.2.5 | **和PLC联调** |  | 3d | 2018-12-19 | 2018-12-21 |  |  |  |  | 56h |  |
| 243 | 9.2.5.1 | 修改选择商品界面 | manual | 3d | 2018-12-19 | 2018-12-21 |  |  |  | 李计培; 袁曾志; 彭宗阁 | 56h |  |
